# лр1

How a schedule from MS Project changed from version to version. A marks actual dates.

## Version 1 (data date 2021-04-09, saved 2021-03-23, file lab4_task1.mpp)

Note of the change: Add labs 1-5 in MS Project

| ID | WBS | Task | Duration | Start | Finish | Predecessors | Complete | Total float | Constraint |
| --- | --- | --- | --- | --- | --- | --- | --- | --- | --- |
| 1 |  | Начало проекта | 0w | 2021-03-01 09:00 A | 2021-03-01 09:00 A |  | 100% |  |  |
| 2 | 2 | **Создание интерфейса** | 94.46d | 2021-03-01 09:00 A | 2021-07-15 12:38 | 1 | 45% | 0d |  |
| 3 | 2.1 | **Разработка дизайна интерфейса** | 43.6d | 2021-03-01 09:00 A | 2021-04-30 14:47 |  | 55% | 40.86d |  |
| 4 |  | Разработка 2D графических элементов | 3w | 2021-03-01 09:00 A | 2021-03-23 12:00 A |  | 100% |  |  |
| 5 |  | Разработка 3D графических элементов | 2w | 2021-03-01 09:00 A | 2021-03-26 14:24 A | 4SS | 100% |  |  |
| 6 |  | Создание заставки | 4.04w | 2021-03-26 14:24 | 2021-04-30 14:47 | 5 |  | 40.86d |  |
| 7 |  | Программирование интерфейса | 2w | 2021-07-01 12:38 | 2021-07-15 12:38 | 3, 12 |  | 0d |  |
| 8 | 3 | **Построение базы объектов** | 92.04d | 2021-03-24 16:00 A | 2021-08-04 16:20 |  | 9% | 11.48d |  |
| 9 |  | Анализ и построение структуры базы объектов | 3.33w | 2021-03-24 16:00 A | 2021-04-16 16:20 |  | 50% | 11.48d |  |
| 10 |  | Программирование средств обработки базы объектов | 3w | 2021-04-16 16:20 | 2021-05-11 16:20 | 9 |  | 11.48d |  |
| 11 |  | Наполнение базы объектов | 12w | 2021-05-11 16:20 | 2021-08-04 16:20 | 10 |  | 11.48d |  |
| 12 | 4 | **Создание ядра GIS** | 84.46d | 2021-03-01 09:00 A | 2021-07-01 12:38 |  | 21% | 0d |  |
| 13 |  | Анализ и проектирование ядра | 3.25w | 2021-03-01 09:00 A | 2021-03-24 16:00 A |  | 100% |  |  |
| 14 |  | Создание модели ядра | 2.52w | 2021-03-24 16:00 | 2021-04-12 11:36 | 13 |  | 4.67d |  |
| 15 |  | Тестирование модели ядра | 1w | 2021-04-19 09:00 A | 2021-04-23 18:00 | 14 |  | 0d |  |
| 16 |  | Создание рабочей версии ядра | 9.07w | 2021-04-26 09:00 | 2021-07-01 12:38 | 15 |  | 0d |  |
| 17 |  | Создание мультимедиа – наполнения | 6w | 2021-04-30 14:47 | 2021-06-17 12:47 | 3 |  | 45.8d |  |
| 18 |  | Создание справочной системы | 2w | 2021-07-26 16:38 | 2021-08-10 09:38 | 7 |  | 8.19d |  |
| 19 | 7 | **Создание руководства пользователя** | 17.38d | 2021-07-01 12:38 | 2021-07-26 16:38 | 7FS-10d |  | 0d |  |
| 20 |  | Разработка дизайна руководства | 1w | 2021-07-01 12:38 | 2021-07-08 14:38 |  |  | 0d |  |
| 21 |  | Написание руководства пользователя | 3w | 2021-07-05 12:38 | 2021-07-26 16:38 | 20SS+2d |  | 0d |  |
| 22 | 8 | **Создание web-сайта и поддержка** | 23.62d | 2021-07-05 12:38 | 2021-08-06 09:38 |  |  | 0d |  |
| 23 |  | Разработка структуры сайта | 1d | 2021-07-05 12:38 | 2021-07-06 12:38 | 21SS |  | 0d |  |
| 24 |  | Разработка дизайна сайта | 1.4w | 2021-07-06 12:38 | 2021-07-15 15:38 | 23 |  | 0d |  |
| 25 |  | Наполнение сайта | 3w | 2021-07-15 15:38 | 2021-08-06 09:38 | 24 |  | 0d |  |
| 26 |  | Тестирование сайта | 3.04w | 2021-07-30 09:38 | 2021-08-20 11:09 | 22FS-1w |  | 0d |  |
| 27 |  | Сдача сайта в эксплуатацию | 0w | 2021-08-20 11:09 | 2021-08-20 11:09 | 26 |  | 0d |  |
| 28 | 11 | **Совещание** | 116.12d | 2021-03-03 09:00 A | 2021-08-18 10:00 |  | 24% | 2.15d |  |
| 29 |  | Совещание 1 | 1h | 2021-03-03 09:00 A | 2021-03-03 10:00 A |  | 100% |  | start no earlier than 2021-03-03 09:00 |
| 30 |  | Совещание 2 | 1h | 2021-03-10 09:00 A | 2021-03-10 10:00 A |  | 100% |  | start no earlier than 2021-03-10 09:00 |
| 31 |  | Совещание 3 | 1h | 2021-03-17 09:00 A | 2021-03-17 10:00 A |  | 100% |  | start no earlier than 2021-03-17 09:00 |
| 32 |  | Совещание 4 | 1h | 2021-03-24 09:00 A | 2021-03-24 10:00 A |  | 100% |  | start no earlier than 2021-03-24 09:00 |
| 33 |  | Совещание 5 | 1h | 2021-03-31 09:00 A | 2021-03-31 10:00 A |  | 100% |  | start no earlier than 2021-03-31 09:00 |
| 34 |  | Совещание 6 | 1h | 2021-04-07 09:00 A | 2021-04-07 10:00 A |  | 100% |  | start no earlier than 2021-04-07 09:00 |
| 35 |  | Совещание 7 | 1h | 2021-04-14 09:00 | 2021-04-14 10:00 |  |  | 89.15d | start no earlier than 2021-04-14 09:00 |
| 36 |  | Совещание 8 | 1h | 2021-04-21 09:00 | 2021-04-21 10:00 |  |  | 84.15d | start no earlier than 2021-04-21 09:00 |
| 37 |  | Совещание 9 | 1h | 2021-04-28 09:00 | 2021-04-28 10:00 |  |  | 79.15d | start no earlier than 2021-04-28 09:00 |
| 38 |  | Совещание 10 | 1h | 2021-05-05 09:00 | 2021-05-05 10:00 |  |  | 75.15d | start no earlier than 2021-05-05 09:00 |
| 39 |  | Совещание 11 | 1h | 2021-05-12 09:00 | 2021-05-12 10:00 |  |  | 71.15d | start no earlier than 2021-05-12 09:00 |
| 40 |  | Совещание 12 | 1h | 2021-05-19 09:00 | 2021-05-19 10:00 |  |  | 66.15d | start no earlier than 2021-05-19 09:00 |
| 41 |  | Совещание 13 | 1h | 2021-05-26 09:00 | 2021-05-26 10:00 |  |  | 61.15d | start no earlier than 2021-05-26 09:00 |
| 42 |  | Совещание 14 | 1h | 2021-06-02 09:00 | 2021-06-02 10:00 |  |  | 56.15d | start no earlier than 2021-06-02 09:00 |
| 43 |  | Совещание 15 | 1h | 2021-06-09 09:00 | 2021-06-09 10:00 |  |  | 51.15d | start no earlier than 2021-06-09 09:00 |
| 44 |  | Совещание 16 | 1h | 2021-06-16 09:00 | 2021-06-16 10:00 |  |  | 47.15d | start no earlier than 2021-06-16 09:00 |
| 45 |  | Совещание 17 | 1h | 2021-06-23 09:00 | 2021-06-23 10:00 |  |  | 42.15d | start no earlier than 2021-06-23 09:00 |
| 46 |  | Совещание 18 | 1h | 2021-06-30 09:00 | 2021-06-30 10:00 |  |  | 37.15d | start no earlier than 2021-06-30 09:00 |
| 47 |  | Совещание 19 | 1h | 2021-07-07 09:00 | 2021-07-07 10:00 |  |  | 32.15d | start no earlier than 2021-07-07 09:00 |
| 48 |  | Совещание 20 | 1h | 2021-07-14 09:00 | 2021-07-14 10:00 |  |  | 27.15d | start no earlier than 2021-07-14 09:00 |
| 49 |  | Совещание 21 | 1h | 2021-07-21 09:00 | 2021-07-21 10:00 |  |  | 22.15d | start no earlier than 2021-07-21 09:00 |
| 50 |  | Совещание 22 | 1h | 2021-07-28 09:00 | 2021-07-28 10:00 |  |  | 17.15d | start no earlier than 2021-07-28 09:00 |
| 51 |  | Совещание 23 | 1h | 2021-08-04 09:00 | 2021-08-04 10:00 |  |  | 12.15d | start no earlier than 2021-08-04 09:00 |
| 52 |  | Совещание 24 | 1h | 2021-08-11 09:00 | 2021-08-11 10:00 |  |  | 7.15d | start no earlier than 2021-08-11 09:00 |
| 53 |  | Совещание 25 | 1h | 2021-08-18 09:00 | 2021-08-18 10:00 |  |  |  | start no earlier than 2021-08-18 09:00 |

## Version 2 (data date 2021-04-09, saved 2021-03-23, file lab4_task2.mpp)

Note of the change: Add labs 1-5 in MS Project

Last finish 2021-08-20 → 2021-07-30 (-21d). Complete tasks 10 → 11.

Removed: 51 Совещание 23; 52 Совещание 24; 53 Совещание 25

Changed:

| ID | Task | Start | Finish | Duration | Complete | Total float | Other |
| --- | --- | --- | --- | --- | --- | --- | --- |
| 2 | **Создание интерфейса** |  | 2021-07-15 12:38 → 2021-07-01 10:25 (-14d) | 94.46d → 84.18d | 45% → 79% | 0d → 0.04d |  |
| 3 | **Разработка дизайна интерфейса** |  | 2021-04-30 14:47 → 2021-04-05 09:33 A (-25d) | 43.6d → 24.07d | 55% → 100% | 40.86d → none |  |
| 5 | Разработка 3D графических элементов |  | 2021-03-26 14:24 A → 2021-03-09 10:00 A (-17d) | 2w → 1w |  |  | resources 3D-аниматор → 3D-аниматор; 3D-аниматор, стажер |
| 6 | Создание заставки | 2021-03-26 14:24 → 2021-03-09 10:00 A (-17d) | 2021-04-30 14:47 → 2021-04-05 09:33 A (-25d) | 4.04w → 1.72w | 0% → 100% | 40.86d → none | resources 3D-аниматор → 3D-аниматор; 3D-аниматор, стажер |
| 7 | Программирование интерфейса | 2021-07-01 12:38 → 2021-06-21 15:25 (-10d) | 2021-07-15 12:38 → 2021-07-01 10:25 (-14d) | 2w → 1.5w |  | 0d → 0.04d | resources Программист №3; Программист №4; Программист №2 → Программист №3; Программист №4; Программист №2; Программист №5 |
| 8 | **Построение базы объектов** |  | 2021-08-04 16:20 → 2021-07-30 12:40 (-5d) | 92.04d → 88.71d |  | 11.48d → 0d |  |
| 10 | Программирование средств обработки базы объектов |  | 2021-05-11 16:20 → 2021-05-05 12:40 (-6d) | 3w → 2.33w |  | 11.48d → 0d | resources Программист №3; Программист №4; Программист №2 → Программист №3; Программист №4; Программист №2; Программист №5 |
| 11 | Наполнение базы объектов | 2021-05-11 16:20 → 2021-05-05 12:40 (-6d) | 2021-08-04 16:20 → 2021-07-30 12:40 (-5d) |  |  | 11.48d → 0d |  |
| 12 | **Создание ядра GIS** |  | 2021-07-01 12:38 → 2021-06-21 15:25 (-10d) | 84.46d → 76.68d | 21% → 23% | 0d → 0.04d |  |
| 16 | Создание рабочей версии ядра |  | 2021-07-01 12:38 → 2021-06-21 15:25 (-10d) | 9.07w → 7.54w |  | 0d → 0.04d | resources Ведущий программист; Программист №2; Программист №3; Программист №4 → Ведущий программист; Программист №2; Программист №3; Программист №4; Программист №5 |
| 17 | Создание мультимедиа – наполнения | 2021-04-30 14:47 → 2021-04-05 09:33 (-25d) | 2021-06-17 12:47 → 2021-05-19 17:33 (-29d) |  |  | 45.8d → 50.51d |  |
| 18 | Создание справочной системы | 2021-07-26 16:38 → 2021-07-12 14:25 (-14d) | 2021-08-10 09:38 → 2021-07-26 16:25 (-15d) |  |  | 8.19d → 3.65d |  |
| 19 | **Создание руководства пользователя** | 2021-07-01 12:38 → 2021-06-17 10:25 (-14d) | 2021-07-26 16:38 → 2021-07-12 14:25 (-14d) |  |  | 0d → 0.04d |  |
| 20 | Разработка дизайна руководства | 2021-07-01 12:38 → 2021-06-17 10:25 (-14d) | 2021-07-08 14:38 → 2021-06-24 11:25 (-14d) |  |  | 0d → 0.04d |  |
| 21 | Написание руководства пользователя | 2021-07-05 12:38 → 2021-06-21 10:25 (-14d) | 2021-07-26 16:38 → 2021-07-12 14:25 (-14d) |  |  | 0d → 0.04d |  |
| 22 | **Создание web-сайта и поддержка** | 2021-07-05 12:38 → 2021-06-21 10:25 (-14d) | 2021-08-06 09:38 → 2021-07-21 10:42 (-16d) | 23.62d → 22.03d |  | 0d → 0.04d |  |
| 23 | Разработка структуры сайта | 2021-07-05 12:38 → 2021-06-21 10:25 (-14d) | 2021-07-06 12:38 → 2021-06-22 10:25 (-14d) |  |  | 0d → 0.04d |  |
| 24 | Разработка дизайна сайта | 2021-07-06 12:38 → 2021-06-22 10:25 (-14d) | 2021-07-15 15:38 → 2021-06-29 15:42 (-16d) | 1.4w → 1.11w |  | 0d → 0.04d | resources 3D-аниматор; Web-дизайнер; Художник-дизайнер → 3D-аниматор; Web-дизайнер; Художник-дизайнер; 3D-аниматор, стажер |
| 25 | Наполнение сайта | 2021-07-15 15:38 → 2021-06-29 15:42 (-16d) | 2021-08-06 09:38 → 2021-07-21 10:42 (-16d) |  |  | 0d → 0.04d |  |
| 26 | Тестирование сайта | 2021-07-30 09:38 → 2021-07-14 10:42 (-16d) | 2021-08-20 11:09 → 2021-07-30 12:18 (-21d) | 3.04w → 2.44w |  | 0d → 0.04d | resources Ведущий программист; Программист №2; Программист №3; Программист №4 → Ведущий программист; Программист №2; Программист №3; Программист №4; Программист №5 |
| 27 | Сдача сайта в эксплуатацию | 2021-08-20 11:09 → 2021-07-30 12:18 (-21d) | 2021-08-20 11:09 → 2021-07-30 12:18 (-21d) |  |  | 0d → 0.04d |  |
| 28 | **Совещание** |  | 2021-08-18 10:00 → 2021-07-28 10:00 (-21d) | 116.12d → 101.12d | 24% → 27% | 2.15d → 2.33d |  |
| 29 | Совещание 1 |  |  |  |  |  | resources 3D-аниматор [80%]; Web-дизайнер; Ведущий программист; Мультимедиа-корреспондент; Системный аналитик; Технический писатель; Художник-дизайнер; Бумага → 3D-аниматор; Web-дизайнер; Ведущий программист; Мультимедиа-корреспондент; Системный аналитик; Технический писатель; Художник-дизайнер; Бумага |
| 30 | Совещание 2 |  |  |  |  |  | resources 3D-аниматор [80%]; Web-дизайнер; Ведущий программист; Мультимедиа-корреспондент; Системный аналитик; Технический писатель; Художник-дизайнер; Бумага → 3D-аниматор; Web-дизайнер; Ведущий программист; Мультимедиа-корреспондент; Системный аналитик; Технический писатель; Художник-дизайнер; Бумага |
| 31 | Совещание 3 |  |  |  |  |  | resources 3D-аниматор [80%]; Web-дизайнер; Ведущий программист; Мультимедиа-корреспондент; Системный аналитик; Технический писатель; Художник-дизайнер; Бумага → 3D-аниматор; Web-дизайнер; Ведущий программист; Мультимедиа-корреспондент; Системный аналитик; Технический писатель; Художник-дизайнер; Бумага |
| 32 | Совещание 4 |  |  |  |  |  | resources 3D-аниматор [80%]; Web-дизайнер; Ведущий программист; Мультимедиа-корреспондент; Системный аналитик; Технический писатель; Художник-дизайнер; Бумага → 3D-аниматор; Web-дизайнер; Ведущий программист; Мультимедиа-корреспондент; Системный аналитик; Технический писатель; Художник-дизайнер; Бумага |
