# лр1

How a schedule from MS Project changed from version to version. A marks actual dates.

## Version 1 (data date 2021-04-09, saved 2021-03-30, file lab5_task2.mpp)

Note of the change: Add labs 1-5 in MS Project

| ID | WBS | Task | Duration | Start | Finish | Predecessors | Complete | Total float | Constraint |
| --- | --- | --- | --- | --- | --- | --- | --- | --- | --- |
| 1 |  | Начало проекта | 0w | 2021-03-01 09:00 A | 2021-03-01 09:00 A |  | 100% |  |  |
| 2 | 2 | **Анализ и разработка** | 83.84d | 2021-03-01 09:00 A | 2021-06-30 16:42 |  | 36% | 0.25d |  |
| 3 |  | Разработка 2D графических элементов | 3w | 2021-03-01 09:00 A | 2021-03-23 12:00 A |  | 100% |  |  |
| 4 |  | Разработка 3D графических элементов | 1w | 2021-03-01 09:00 A | 2021-03-09 10:00 A | 3SS | 100% |  |  |
| 5 |  | Анализ и построение структуры базы объектов | 13.31w | 2021-03-24 09:00 A | 2021-04-16 18:00 |  | 8% | 0d |  |
| 6 |  | Анализ и проектирование ядра | 3.25w | 2021-03-01 09:00 A | 2021-03-24 16:00 A |  | 100% |  |  |
| 7 |  | Разработка дизайна руководства | 1w | 2021-06-18 10:25 | 2021-06-25 11:25 | 12FS-10d |  | 0.25d |  |
| 8 |  | Разработка структуры сайта | 1d | 2021-06-22 10:25 | 2021-06-23 11:25 | 19SS |  | 0.25d |  |
| 9 |  | Разработка дизайна сайта | 1.11w | 2021-06-23 11:25 | 2021-06-30 16:42 | 8 |  | 0.25d |  |
| 10 | 3 | **Программирование и создание** | 97.68d | 2021-03-09 10:00 A | 2021-07-27 16:25 |  | 6% | 3.86d |  |
| 11 |  | Создание заставки | 1.72w | 2021-03-09 10:00 A | 2021-04-05 09:33 A | 4 | 100% |  |  |
| 12 |  | Программирование интерфейса | 1.5w | 2021-06-22 15:25 | 2021-07-02 10:25 | 11, 15 |  | 0.25d |  |
| 13 |  | Программирование средств обработки базы объектов | 7.76w | 2021-04-16 18:00 | 2021-05-05 15:20 | 5 |  | 0d |  |
| 14 |  | Создание модели ядра | 2.52w | 2021-03-24 16:00 | 2021-04-12 11:36 | 6 |  | 4.67d |  |
| 15 |  | Создание рабочей версии ядра | 7.71w | 2021-04-26 09:00 | 2021-06-22 15:25 | 23 |  | 0.25d |  |
| 16 |  | Создание мультимедиа – наполнения | 6w | 2021-04-05 09:33 | 2021-05-19 17:33 | 11 |  | 51.72d |  |
| 17 |  | Создание справочной системы | 2w | 2021-07-13 14:25 | 2021-07-27 16:25 | 12 |  | 3.86d |  |
| 18 | 4 | **Наполнение** | 61d | 2021-05-05 15:20 | 2021-08-02 15:20 |  |  | 0d |  |
| 19 |  | Написание руководства пользователя | 3w | 2021-06-22 10:25 | 2021-07-13 14:25 | 7SS+2d |  | 0.25d |  |
| 20 |  | Наполнение базы объектов | 53.4w | 2021-05-05 15:20 | 2021-08-02 15:20 | 13 |  | 0d |  |
| 21 |  | Наполнение сайта | 3w | 2021-06-30 16:42 | 2021-07-22 10:42 | 9 |  | 0.25d |  |
| 22 | 5 | **Тестирование** | 72.41d | 2021-04-19 09:00 A | 2021-08-02 12:18 |  |  | 0.25d |  |
| 23 |  | Тестирование модели ядра | 1w | 2021-04-19 09:00 A | 2021-04-23 18:00 | 14 |  | 0.25d |  |
| 24 |  | Тестирование сайта | 2.44w | 2021-07-15 10:42 | 2021-08-02 12:18 | 21FS-1w |  | 0.25d |  |
| 25 |  | Сдача сайта в эксплуатацию | 0w | 2021-08-02 12:18 | 2021-08-02 12:18 | 24 |  | 0.25d |  |
| 26 | 7 | **Совещание** | 101.12d | 2021-03-03 09:00 A | 2021-07-28 10:00 |  | 27% | 3.54d |  |
| 27 |  | Совещание 1 | 1h | 2021-03-03 09:00 A | 2021-03-03 10:00 A |  | 100% |  | start no earlier than 2021-03-03 09:00 |
| 28 |  | Совещание 2 | 1h | 2021-03-10 09:00 A | 2021-03-10 10:00 A |  | 100% |  | start no earlier than 2021-03-10 09:00 |
| 29 |  | Совещание 3 | 1h | 2021-03-17 09:00 A | 2021-03-17 10:00 A |  | 100% |  | start no earlier than 2021-03-17 09:00 |
| 30 |  | Совещание 4 | 1h | 2021-03-24 09:00 A | 2021-03-24 10:00 A |  | 100% |  | start no earlier than 2021-03-24 09:00 |
| 31 |  | Совещание 5 | 1h | 2021-03-31 09:00 A | 2021-03-31 10:00 A |  | 100% |  | start no earlier than 2021-03-31 09:00 |
| 32 |  | Совещание 6 | 1h | 2021-04-07 09:00 A | 2021-04-07 10:00 A |  | 100% |  | start no earlier than 2021-04-07 09:00 |
| 33 |  | Совещание 7 | 1h | 2021-04-14 09:00 | 2021-04-14 10:00 |  |  | 75.54d | start no earlier than 2021-04-14 09:00 |
| 34 |  | Совещание 8 | 1h | 2021-04-21 09:00 | 2021-04-21 10:00 |  |  | 70.54d | start no earlier than 2021-04-21 09:00 |
| 35 |  | Совещание 9 | 1h | 2021-04-28 09:00 | 2021-04-28 10:00 |  |  | 65.54d | start no earlier than 2021-04-28 09:00 |
| 36 |  | Совещание 10 | 1h | 2021-05-05 09:00 | 2021-05-05 10:00 |  |  | 61.54d | start no earlier than 2021-05-05 09:00 |
| 37 |  | Совещание 11 | 1h | 2021-05-12 09:00 | 2021-05-12 10:00 |  |  | 57.54d | start no earlier than 2021-05-12 09:00 |
| 38 |  | Совещание 12 | 1h | 2021-05-19 09:00 | 2021-05-19 10:00 |  |  | 52.54d | start no earlier than 2021-05-19 09:00 |
| 39 |  | Совещание 13 | 1h | 2021-05-26 09:00 | 2021-05-26 10:00 |  |  | 47.54d | start no earlier than 2021-05-26 09:00 |
| 40 |  | Совещание 14 | 1h | 2021-06-02 09:00 | 2021-06-02 10:00 |  |  | 42.54d | start no earlier than 2021-06-02 09:00 |
| 41 |  | Совещание 15 | 1h | 2021-06-09 09:00 | 2021-06-09 10:00 |  |  | 37.54d | start no earlier than 2021-06-09 09:00 |
| 42 |  | Совещание 16 | 1h | 2021-06-16 09:00 | 2021-06-16 10:00 |  |  | 33.54d | start no earlier than 2021-06-16 09:00 |
| 43 |  | Совещание 17 | 1h | 2021-06-23 09:00 | 2021-06-23 10:00 |  |  | 28.54d | start no earlier than 2021-06-23 09:00 |
| 44 |  | Совещание 18 | 1h | 2021-06-30 09:00 | 2021-06-30 10:00 |  |  | 23.54d | start no earlier than 2021-06-30 09:00 |
| 45 |  | Совещание 19 | 1h | 2021-07-07 09:00 | 2021-07-07 10:00 |  |  | 18.54d | start no earlier than 2021-07-07 09:00 |
| 46 |  | Совещание 20 | 1h | 2021-07-14 09:00 | 2021-07-14 10:00 |  |  | 13.54d | start no earlier than 2021-07-14 09:00 |
| 47 |  | Совещание 21 | 1h | 2021-07-21 09:00 | 2021-07-21 10:00 |  |  | 8.54d | start no earlier than 2021-07-21 09:00 |
| 48 |  | Совещание 22 | 1h | 2021-07-28 09:00 | 2021-07-28 10:00 |  |  | 3.54d | start no earlier than 2021-07-28 09:00 |

## Version 2 (data date 2021-04-09, saved 2021-03-30, file lab5_task1.mpp)

Note of the change: Add labs 1-5 in MS Project

Last finish 2021-08-02 → 2021-07-30 (-3d).

Added:

| ID | Task | Duration | Start | Finish | Predecessors | Resources |
| --- | --- | --- | --- | --- | --- | --- |
| 2 | **Создание интерфейса** | 84.18d | 2021-03-01 09:00 A | 2021-07-01 10:25 | 1 |  |
| 3 | **Разработка дизайна интерфейса** | 24.07d | 2021-03-01 09:00 A | 2021-04-05 09:33 A |  |  |
| 8 | **Построение базы объектов** | 88.71d | 2021-03-24 16:00 A | 2021-07-30 12:40 |  | Сервер |
| 12 | **Создание ядра GIS** | 76.68d | 2021-03-01 09:00 A | 2021-06-21 15:25 |  |  |
| 19 | **Создание руководства пользователя** | 17.38d | 2021-06-17 10:25 | 2021-07-12 14:25 | 7FS-10d |  |
| 22 | **Создание web-сайта и поддержка** | 22.03d | 2021-06-21 10:25 | 2021-07-21 10:42 |  |  |

Removed: 2 Анализ и разработка; 10 Программирование и создание; 18 Наполнение; 22 Тестирование

Changed:

| ID | Task | Start | Finish | Duration | Complete | Total float | Predecessors | Other |
| --- | --- | --- | --- | --- | --- | --- | --- | --- |
| 7 | Программирование интерфейса | 2021-06-22 15:25 → 2021-06-21 15:25 (-1d) | 2021-07-02 10:25 → 2021-07-01 10:25 (-1d) |  |  | 0.25d → 0.04d | 6, 16 → 3, 12 |  |
| 9 | Анализ и построение структуры базы объектов | 2021-03-24 09:00 A → 2021-03-24 16:00 A | 2021-04-16 18:00 → 2021-04-16 16:20 | 13.31w → 3.33w | 8% → 50% |  |  | resources Системный аналитик; Сервер → Системный аналитик |
| 10 | Программирование средств обработки базы объектов | 2021-04-16 18:00 → 2021-04-16 16:20 | 2021-05-05 15:20 → 2021-05-05 12:40 | 7.76w → 2.33w |  |  |  | resources Программист №3; Программист №4; Программист №2; Программист №5; Сервер → Программист №3; Программист №4; Программист №2; Программист №5 |
| 11 | Наполнение базы объектов | 2021-05-05 15:20 → 2021-05-05 12:40 | 2021-08-02 15:20 → 2021-07-30 12:40 (-3d) | 53.4w → 12w |  |  |  | resources Наборщик данных №1; Наборщик данных №2; Наборщик данных №3; Наборщик данных №4; Наборщик данных №5; Сервер → Наборщик данных №1; Наборщик данных №2; Наборщик данных №3; Наборщик данных №4; Наборщик данных №5 |
| 16 | Создание рабочей версии ядра |  | 2021-06-22 15:25 → 2021-06-21 15:25 (-1d) | 7.71w → 7.54w |  | 0.25d → 0.04d |  |  |
| 17 | Создание мультимедиа – наполнения |  |  |  |  | 51.72d → 50.51d | 6 → 3 |  |
| 18 | Создание справочной системы | 2021-07-13 14:25 → 2021-07-12 14:25 (-1d) | 2021-07-27 16:25 → 2021-07-26 16:25 (-1d) |  |  | 3.86d → 3.65d |  |  |
| 20 | Разработка дизайна руководства | 2021-06-18 10:25 → 2021-06-17 10:25 (-1d) | 2021-06-25 11:25 → 2021-06-24 11:25 (-1d) |  |  | 0.25d → 0.04d | 7FS-10d → none |  |
| 21 | Написание руководства пользователя | 2021-06-22 10:25 → 2021-06-21 10:25 (-1d) | 2021-07-13 14:25 → 2021-07-12 14:25 (-1d) |  |  | 0.25d → 0.04d |  |  |
| 23 | Разработка структуры сайта | 2021-06-22 10:25 → 2021-06-21 10:25 (-1d) | 2021-06-23 11:25 → 2021-06-22 10:25 (-1d) |  |  | 0.25d → 0.04d |  |  |
| 24 | Разработка дизайна сайта | 2021-06-23 11:25 → 2021-06-22 10:25 (-1d) | 2021-06-30 16:42 → 2021-06-29 15:42 (-1d) |  |  | 0.25d → 0.04d |  |  |
| 25 | Наполнение сайта | 2021-06-30 16:42 → 2021-06-29 15:42 (-1d) | 2021-07-22 10:42 → 2021-07-21 10:42 (-1d) |  |  | 0.25d → 0.04d |  |  |
| 26 | Тестирование сайта | 2021-07-15 10:42 → 2021-07-14 10:42 (-1d) | 2021-08-02 12:18 → 2021-07-30 12:18 (-3d) |  |  | 0.25d → 0.04d | 25FS-1w → 22FS-1w |  |
| 27 | Сдача сайта в эксплуатацию | 2021-08-02 12:18 → 2021-07-30 12:18 (-3d) | 2021-08-02 12:18 → 2021-07-30 12:18 (-3d) |  |  | 0.25d → 0.04d |  |  |
