# рк

How a schedule from MS Project changed from version to version. A marks actual dates.

## Version 1 (saved 2021-03-30, file task7.mpp)

Note of the change: Add labs 1-5 in MS Project

| ID | WBS | Task | Duration | Start | Finish | Predecessors | Total float |
| --- | --- | --- | --- | --- | --- | --- | --- |
| 1 | 1 | **РК** | 56d | 2021-04-05 | 2021-06-24 |  | 0d |
| 2 |  | Начало проекта | 0d | 2021-04-05 | 2021-04-05 |  | 0d |
| 3 |  | Установка ПО | 15d | 2021-04-06 | 2021-04-26 | 2FS+1d | 0d |
| 4 |  | Обучение персонала | 20d | 2021-04-20 | 2021-05-19 | 3SS+10d | 0d |
| 5 | 1.4 | **Разработка представительских сайтов** | 8d | 2021-05-20 | 2021-05-31 | 4 | 17d |
| 6 | 1.4.1 | **Разработка сайта 1** | 5d | 2021-05-20 | 2021-05-26 |  | 17d |
| 7 |  | Разработка дизайна сайта 1 | 2d | 2021-05-20 | 2021-05-21 |  | 17d |
| 8 |  | Программирование сайта 1 | 3d | 2021-05-24 | 2021-05-26 | 7 | 17d |
| 9 | 1.4.2 | **Разработка сайта 2** | 5d | 2021-05-25 | 2021-05-31 | 6FS-2d | 17d |
| 10 |  | Разработка дизайна сайта 2 | 2d | 2021-05-25 | 2021-05-26 |  | 17d |
| 11 |  | Программирование сайта 2 | 3d | 2021-05-27 | 2021-05-31 | 10 | 17d |
| 12 |  | Представительские сайты созданы | 0d | 2021-05-31 | 2021-05-31 | 5 | 17d |
| 13 | 1.6 | **Разработка корпоративного сайта** | 25d | 2021-05-20 | 2021-06-24 | 4 | 0d |
| 14 |  | Проектирование сайта | 5d | 2021-05-20 | 2021-05-26 |  | 0d |
| 15 |  | Программирование сайта | 15d | 2021-05-27 | 2021-06-17 | 14 | 0d |
| 16 |  | Наполнение сайта | 3d | 2021-06-15 | 2021-06-17 | 15FS-3d | 0d |
| 17 |  | Тестирование сайта | 5d | 2021-06-18 | 2021-06-24 | 16 | 0d |
| 18 |  | Сдача сайта закзчику | 0d | 2021-06-24 | 2021-06-24 | 17 | 0d |

## Version 2 (saved 2021-03-30, file task8_1.mpp)

Note of the change: Add labs 1-5 in MS Project

Last finish 2021-06-24 → 2021-06-29 (+5d).

Changed:

| ID | Task | Start | Finish | Duration | Other |
| --- | --- | --- | --- | --- | --- |
| 1 | **РК** |  | 2021-06-24 → 2021-06-29 (+5d) | 56d → 58.14d |  |
| 4 | Обучение персонала |  | 2021-05-19 → 2021-05-24 (+5d) | 20d → 22.14d | resources Преподаватели [400%]; Соломин; Тимофеев; Бумага; Картриджи для принтера; Кузнецов; Петров; Яковлева → Преподаватели [300%]; Соломин; Тимофеев; Бумага; Картриджи для принтера; Кузнецов; Петров; Яковлева; Соколов |
| 5 | **Разработка представительских сайтов** | 2021-05-20 → 2021-05-24 (+4d) | 2021-05-31 → 2021-06-03 (+3d) |  |  |
| 6 | **Разработка сайта 1** | 2021-05-20 → 2021-05-24 (+4d) | 2021-05-26 → 2021-05-31 (+5d) |  |  |
| 7 | Разработка дизайна сайта 1 | 2021-05-20 → 2021-05-24 (+4d) | 2021-05-21 → 2021-05-26 (+5d) |  |  |
| 8 | Программирование сайта 1 | 2021-05-24 → 2021-05-26 (+2d) | 2021-05-26 → 2021-05-31 (+5d) |  |  |
| 9 | **Разработка сайта 2** | 2021-05-25 → 2021-05-27 (+2d) | 2021-05-31 → 2021-06-03 (+3d) |  |  |
| 10 | Разработка дизайна сайта 2 | 2021-05-25 → 2021-05-27 (+2d) | 2021-05-26 → 2021-05-31 (+5d) |  |  |
| 11 | Программирование сайта 2 | 2021-05-27 → 2021-05-31 (+4d) | 2021-05-31 → 2021-06-03 (+3d) |  |  |
| 12 | Представительские сайты созданы | 2021-05-31 → 2021-06-03 (+3d) | 2021-05-31 → 2021-06-03 (+3d) |  |  |
| 13 | **Разработка корпоративного сайта** | 2021-05-20 → 2021-05-24 (+4d) | 2021-06-24 → 2021-06-29 (+5d) |  |  |
| 14 | Проектирование сайта | 2021-05-20 → 2021-05-24 (+4d) | 2021-05-26 → 2021-05-31 (+5d) |  |  |
| 15 | Программирование сайта | 2021-05-27 → 2021-05-31 (+4d) | 2021-06-17 → 2021-06-22 (+5d) |  |  |
| 16 | Наполнение сайта | 2021-06-15 → 2021-06-17 (+2d) | 2021-06-17 → 2021-06-22 (+5d) |  |  |
| 17 | Тестирование сайта | 2021-06-18 → 2021-06-22 (+4d) | 2021-06-24 → 2021-06-29 (+5d) |  |  |
| 18 | Сдача сайта закзчику | 2021-06-24 → 2021-06-29 (+5d) | 2021-06-24 → 2021-06-29 (+5d) |  |  |

## Version 3 (saved 2021-03-30, file task8_2.mpp)

Note of the change: Add labs 1-5 in MS Project

Last finish 2021-06-29 → 2021-07-07 (+8d).

Changed:

| ID | Task | Start | Finish | Duration |
| --- | --- | --- | --- | --- |
| 1 | **РК** |  | 2021-06-29 → 2021-07-07 (+8d) | 58.14d → 64.57d |
| 3 | Установка ПО |  | 2021-04-26 → 2021-05-12 (+16d) | 15d → 25d |
| 4 | Обучение персонала |  | 2021-05-24 → 2021-06-01 (+8d) | 22.14d → 28.57d |
| 5 | **Разработка представительских сайтов** | 2021-05-24 → 2021-06-01 (+8d) | 2021-06-03 → 2021-06-11 (+8d) |  |
| 6 | **Разработка сайта 1** | 2021-05-24 → 2021-06-01 (+8d) | 2021-05-31 → 2021-06-08 (+8d) |  |
| 7 | Разработка дизайна сайта 1 | 2021-05-24 → 2021-06-01 (+8d) | 2021-05-26 → 2021-06-03 (+8d) |  |
| 8 | Программирование сайта 1 | 2021-05-26 → 2021-06-03 (+8d) | 2021-05-31 → 2021-06-08 (+8d) |  |
| 9 | **Разработка сайта 2** | 2021-05-27 → 2021-06-04 (+8d) | 2021-06-03 → 2021-06-11 (+8d) |  |
| 10 | Разработка дизайна сайта 2 | 2021-05-27 → 2021-06-04 (+8d) | 2021-05-31 → 2021-06-08 (+8d) |  |
| 11 | Программирование сайта 2 | 2021-05-31 → 2021-06-08 (+8d) | 2021-06-03 → 2021-06-11 (+8d) |  |
| 12 | Представительские сайты созданы | 2021-06-03 → 2021-06-11 (+8d) | 2021-06-03 → 2021-06-11 (+8d) |  |
| 13 | **Разработка корпоративного сайта** | 2021-05-24 → 2021-06-01 (+8d) | 2021-06-29 → 2021-07-07 (+8d) |  |
| 14 | Проектирование сайта | 2021-05-24 → 2021-06-01 (+8d) | 2021-05-31 → 2021-06-08 (+8d) |  |
| 15 | Программирование сайта | 2021-05-31 → 2021-06-08 (+8d) | 2021-06-22 → 2021-06-30 (+8d) |  |
| 16 | Наполнение сайта | 2021-06-17 → 2021-06-25 (+8d) | 2021-06-22 → 2021-06-30 (+8d) |  |
| 17 | Тестирование сайта | 2021-06-22 → 2021-06-30 (+8d) | 2021-06-29 → 2021-07-07 (+8d) |  |
| 18 | Сдача сайта закзчику | 2021-06-29 → 2021-07-07 (+8d) | 2021-06-29 → 2021-07-07 (+8d) |  |

## Version 4 (saved 2021-03-30, file before_task6.mpp)

Note of the change: Add labs 1-5 in MS Project

Last finish 2021-07-07 → 2021-06-24 (-13d).

Removed: 7 Разработка дизайна сайта 1; 8 Программирование сайта 1; 10 Разработка дизайна сайта 2; 11 Программирование сайта 2

Changed:

| ID | Task | Start | Finish | Duration | Total float | Other |
| --- | --- | --- | --- | --- | --- | --- |
| 1 | **РК** |  | 2021-07-07 → 2021-06-24 (-13d) | 64.57d → 56d |  |  |
| 3 | Установка ПО |  | 2021-05-12 → 2021-04-26 (-16d) | 25d → 15d |  |  |
| 4 | Обучение персонала |  | 2021-06-01 → 2021-05-19 (-13d) | 28.57d → 20d |  | resources Преподаватели [300%]; Соломин; Тимофеев; Бумага; Картриджи для принтера; Кузнецов; Петров; Яковлева; Соколов → Преподаватели [400%]; Соломин; Тимофеев; Бумага; Картриджи для принтера; Кузнецов; Петров; Яковлева |
| 5 | **Разработка представительских сайтов** | 2021-06-01 → 2021-05-20 (-12d) | 2021-06-11 → 2021-06-02 (-9d) | 8d → 10d | 17d → 15d |  |
| 6 | Разработка сайта 1 | 2021-06-01 → 2021-05-20 (-12d) | 2021-06-08 → 2021-05-26 (-13d) |  | 17d → 15d | resources none → Кузнецов; Тимофеев |
| 7 | Разработка сайта 2 | 2021-06-04 → 2021-05-27 (-8d) | 2021-06-11 → 2021-06-02 (-9d) |  | 17d → 15d | resources none → Тимофеев; Кузнецов |
| 8 | Представительские сайты созданы | 2021-06-11 → 2021-06-02 (-9d) | 2021-06-11 → 2021-06-02 (-9d) |  | 17d → 15d |  |
| 9 | **Разработка корпоративного сайта** | 2021-06-01 → 2021-05-20 (-12d) | 2021-07-07 → 2021-06-24 (-13d) |  |  |  |
| 10 | Проектирование сайта | 2021-06-01 → 2021-05-20 (-12d) | 2021-06-08 → 2021-05-26 (-13d) |  |  |  |
| 11 | Программирование сайта | 2021-06-08 → 2021-05-27 (-12d) | 2021-06-30 → 2021-06-17 (-13d) |  |  |  |
| 12 | Наполнение сайта | 2021-06-25 → 2021-06-15 (-10d) | 2021-06-30 → 2021-06-17 (-13d) |  |  |  |
| 13 | Тестирование сайта | 2021-06-30 → 2021-06-18 (-12d) | 2021-07-07 → 2021-06-24 (-13d) |  |  |  |
| 14 | Сдача сайта закзчику | 2021-07-07 → 2021-06-24 (-13d) | 2021-07-07 → 2021-06-24 (-13d) |  |  |  |

## Version 5 (saved 2021-03-30, file task9.mpp)

Note of the change: Add labs 1-5 in MS Project

Last finish 2021-06-24 → 2021-06-16 (-8d).

Added:

| ID | Task | Duration | Start | Finish | Predecessors | Resources |
| --- | --- | --- | --- | --- | --- | --- |
| 7 | Разработка дизайна сайта 1 | 2d | 2021-05-24 | 2021-05-26 |  | Кузнецов |
| 8 | Программирование сайта 1 | 3d | 2021-05-26 | 2021-05-31 | 7 | Тимофеев |
| 10 | Разработка дизайна сайта 2 | 2d | 2021-05-27 | 2021-05-31 |  | Кузнецов |
| 11 | Программирование сайта 2 | 3d | 2021-05-31 | 2021-06-03 | 10 | Тимофеев |

Changed:

| ID | Task | Start | Finish | Duration | Total float | Other |
| --- | --- | --- | --- | --- | --- | --- |
| 1 | **РК** |  | 2021-06-24 → 2021-06-16 (-8d) | 56d → 49.81d |  | baseline start none → 2021-04-05; baseline finish none → 2021-06-16 |
| 2 | Начало проекта |  |  |  |  | baseline start none → 2021-04-05; baseline finish none → 2021-04-05 |
| 3 | Установка ПО |  |  |  |  | baseline start none → 2021-04-06; baseline finish none → 2021-04-26 |
| 4 | Обучение персонала |  | 2021-05-19 → 2021-05-24 (+5d) | 20d → 22.14d |  | resources Преподаватели [400%]; Соломин; Тимофеев; Бумага; Картриджи для принтера; Кузнецов; Петров; Яковлева → Преподаватели [300%]; Соломин; Тимофеев; Бумага; Картриджи для принтера; Кузнецов; Петров; Яковлева; Соколов; baseline start none → 2021-04-20; baseline finish none → 2021-05-24 |
| 5 | **Разработка представительских сайтов** | 2021-05-20 → 2021-05-24 (+4d) | 2021-06-02 → 2021-06-03 (+1d) | 10d → 8d | 15d → 8.67d | baseline start none → 2021-05-24; baseline finish none → 2021-06-03 |
| 6 | **Разработка сайта 1** | 2021-05-20 → 2021-05-24 (+4d) | 2021-05-26 → 2021-05-31 (+5d) |  | 15d → 8.67d | resources Кузнецов; Тимофеев → none; baseline start none → 2021-05-24; baseline finish none → 2021-05-31 |
| 9 | **Разработка сайта 2** |  | 2021-06-02 → 2021-06-03 (+1d) |  | 15d → 8.67d | resources Тимофеев; Кузнецов → none; baseline start none → 2021-05-27; baseline finish none → 2021-06-03 |
| 12 | Представительские сайты созданы | 2021-06-02 → 2021-06-03 (+1d) | 2021-06-02 → 2021-06-03 (+1d) |  | 15d → 8.67d | baseline start none → 2021-06-03; baseline finish none → 2021-06-03 |
| 13 | **Разработка корпоративного сайта** | 2021-05-20 → 2021-05-24 (+4d) | 2021-06-24 → 2021-06-16 (-8d) | 25d → 16.67d |  | baseline start none → 2021-05-24; baseline finish none → 2021-06-16 |
| 14 | Проектирование сайта | 2021-05-20 → 2021-05-24 (+4d) | 2021-05-26 → 2021-05-27 (+1d) | 5d → 3.33d |  | resources Соколов; Петров → Соколов; Петров; Иванов; baseline start none → 2021-05-24; baseline finish none → 2021-05-27 |
| 15 | Программирование сайта |  | 2021-06-17 → 2021-06-10 (-7d) | 15d → 10d |  | resources Соломин; Яковлева → Соломин; Яковлева; Иванов; baseline start none → 2021-05-27; baseline finish none → 2021-06-10 |
| 16 | Наполнение сайта | 2021-06-15 → 2021-06-07 (-8d) | 2021-06-17 → 2021-06-10 (-7d) |  |  | baseline start none → 2021-06-07; baseline finish none → 2021-06-10 |
| 17 | Тестирование сайта | 2021-06-18 → 2021-06-10 (-8d) | 2021-06-24 → 2021-06-16 (-8d) | 5d → 3.33d |  | resources Соломин; Яковлева → Соломин; Яковлева; Иванов; baseline start none → 2021-06-10; baseline finish none → 2021-06-16 |
| 18 | Сдача сайта закзчику | 2021-06-24 → 2021-06-16 (-8d) | 2021-06-24 → 2021-06-16 (-8d) |  |  | baseline start none → 2021-06-16; baseline finish none → 2021-06-16 |

## Version 6 (data date 2021-06-01, saved 2021-03-30, file task10.mpp)

Note of the change: Add labs 1-5 in MS Project

Last finish 2021-06-16 → 2021-06-18 (+2d). Complete tasks 0 → 4.

Changed:

| ID | Task | Start | Finish | Duration | Complete | Total float |
| --- | --- | --- | --- | --- | --- | --- |
| 1 | **РК** | 2021-04-05 A | 2021-06-16 → 2021-06-18 (+2d) | 49.81d → 51.33d | 0% → 60% |  |
| 2 | Начало проекта | 2021-04-05 A | 2021-04-05 A |  | 0% → 100% | 0d → none |
| 3 | Установка ПО | 2021-04-06 A | 2021-04-26 A |  | 0% → 100% | 0d → none |
| 4 | Обучение персонала | 2021-04-20 A | 2021-05-24 A |  | 0% → 100% | 0d → none |
| 5 | **Разработка представительских сайтов** | 2021-05-24 A | 2021-06-03 → 2021-06-07 (+4d) | 8d → 10.86d | 0% → 38% | 8.67d → 7.33d |
| 6 | **Разработка сайта 1** | 2021-05-24 A | 2021-05-31 → 2021-06-02 (+2d) | 5d → 7.86d | 0% → 62% | 8.67d → 7.33d |
| 7 | Разработка дизайна сайта 1 | 2021-05-24 A | 2021-05-26 → 2021-05-28 A (+2d) | 2d → 4.86d | 0% → 100% | 8.67d → none |
| 8 | Программирование сайта 1 | 2021-05-26 → 2021-05-31 (+5d) | 2021-05-31 → 2021-06-02 (+2d) |  |  | 8.67d → 7.33d |
| 9 | **Разработка сайта 2** | 2021-05-27 → 2021-06-01 (+5d) | 2021-06-03 → 2021-06-07 (+4d) |  |  | 8.67d → 7.33d |
| 10 | Разработка дизайна сайта 2 | 2021-05-27 → 2021-06-01 (+5d) | 2021-05-31 → 2021-06-02 (+2d) |  |  | 8.67d → 7.33d |
| 11 | Программирование сайта 2 | 2021-05-31 → 2021-06-03 (+3d) | 2021-06-03 → 2021-06-07 (+4d) |  |  | 8.67d → 7.33d |
| 12 | Представительские сайты созданы | 2021-06-03 → 2021-06-07 (+4d) | 2021-06-03 → 2021-06-07 (+4d) |  |  | 8.67d → 7.33d |
| 13 | **Разработка корпоративного сайта** | 2021-05-24 A | 2021-06-16 → 2021-06-18 (+2d) | 16.67d → 18.19d |  |  |
| 15 | Программирование сайта | 2021-05-27 → 2021-05-31 A (+4d) | 2021-06-10 → 2021-06-11 (+1d) |  |  |  |
| 16 | Наполнение сайта | 2021-06-07 → 2021-06-09 (+2d) | 2021-06-10 → 2021-06-11 (+1d) |  |  |  |
| 17 | Тестирование сайта | 2021-06-10 → 2021-06-15 (+5d) | 2021-06-16 → 2021-06-18 (+2d) |  |  |  |
| 18 | Сдача сайта закзчику | 2021-06-16 → 2021-06-18 (+2d) | 2021-06-16 → 2021-06-18 (+2d) |  |  |  |
